# INFOR

Schedule from ProjectLibre, 2020-09-14 to 2021-08-11.

## Calendars

- Estandar: Mon-Fri 08:00-12:00, 13:00-17:00; Sat-Sun off.

## Resources

| Resource | Rate | Cost per use |
| --- | --- | --- |
| Unassigned |  |  |
| Director del proyecto | 55 |  |
| Usuario (a Tiempo Completo) | 28 |  |
| Analista de Software | 55 |  |
| Analista de Hardware | 55 |  |
| Analista de Redes | 55 |  |
| Diseñador de Software | 48 |  |
| Diseñador de Hardware (DNH) | 48 |  |
| Diseñador de Redes | 48 |  |
| Programador | 30 |  |
| Instalador de Software | 24 |  |
| Instalador de Hardware | 24 |  |
| Instalador de Redes | 24 |  |
| Hardware |  | 21035 |
| Redes |  | 16828 |
| Licencias de Software de desarrollo |  | 4808 |

## Schedule

| ID | WBS | Task | Duration | Start | Finish | Predecessors | Resources |
| --- | --- | --- | --- | --- | --- | --- | --- |
| 1 | 1 | **Estudio del marco organizativo** | 237.39d | 2020-09-14 | 2021-08-11 |  |  |
| 2 | 1.1 | Recogida de información | 1.75d | 2020-09-14 | 2020-09-15 |  | Director del proyecto [50%]; Analista de Software [50%] |
| 3 | 1.2 | Validación | 0d | 2020-09-15 | 2020-09-15 | 2 | Director del proyecto |
| 4 | 1.3 | **Análisis de los procesos** | 12.01d | 2020-09-15 | 2020-10-01 |  |  |
| 5 | 1.3.1 | Cuestionarios | 0.47d | 2020-09-15 | 2020-09-16 | 3 | Director del proyecto [25%]; Usuario (a Tiempo Completo); Analista de Software [200%] |
| 6 | 1.3.2 | Entrevistas | 1.54d | 2020-09-16 | 2020-09-17 | 5 | Director del proyecto [25%]; Usuario (a Tiempo Completo); Analista de Software [200%] |
| 7 | 1.3.3 | Modelo idef0 | 8d | 2020-09-21 | 2020-10-01 | 6FS+2d | Director del proyecto [25%]; Analista de Software [200%] |
| 8 | 1.4 | **Nuevo modelo de funcionamiento** | 8.7d | 2020-10-08 | 2020-10-21 |  |  |
| 9 | 1.4.1 | Descripción textual | 4.41d | 2020-10-08 | 2020-10-15 | 7FS+1w | Director del proyecto [12%]; Analista de Software [200%] |
| 10 | 1.4.2 | Modelo idef0 | 4.29d | 2020-10-15 | 2020-10-21 | 9 | Director del proyecto [12%]; Analista de Software [200%] |
| 11 | 1.5 | **Definición de requisitos** | 16.6d | 2020-10-21 | 2020-11-13 |  |  |
| 12 | 1.5.1 | Estudio | 0.85d | 2020-10-21 | 2020-10-22 | 10 | Director del proyecto [12%]; Usuario (a Tiempo Completo); Analista de Software [200%] |
| 13 | 1.5.2 | Análisis | 10d | 2020-10-22 | 2020-11-05 | 12 | Analista de Software [200%] |
| 14 | 1.5.3 | Síntesis | 5d | 2020-11-05 | 2020-11-12 | 13 | Analista de Software [200%] |
| 15 | 1.5.4 | Validación | 0.75d | 2020-11-12 | 2020-11-13 | 14 | Director del proyecto; Usuario (a Tiempo Completo); Analista de Software [200%] |
| 16 | 1.6 | **Desarrollo del software** | 165d | 2020-11-13 | 2021-07-02 |  |  |
| 17 | 1.6.1 | Análisis | 40d | 2020-11-13 | 2021-01-08 | 15 | Analista de Software [200%] |
| 18 | 1.6.2 | Diseño | 20d | 2021-01-08 | 2021-02-05 | 17 | Diseñador de Software [200%] |
| 19 | 1.6.3 | Codificación | 80d | 2021-02-12 | 2021-06-04 | 18FS+1w | Programador [300%]; Licencias de Software de desarrollo |
| 20 | 1.6.4 | Test y pruebas | 20d | 2021-06-04 | 2021-07-02 | 19 | Programador [200%] |
| 21 | 1.7 | **Hardware** | 11.07d | 2020-11-13 | 2020-11-30 |  |  |
| 22 | 1.7.1 | Selección | 10d | 2020-11-13 | 2020-11-27 | 15 | Analista de Hardware |
| 23 | 1.7.2 | Compra (HW) | 1.07d | 2020-11-27 | 2020-11-30 | 22 | Director del proyecto [12%]; Diseñador de Hardware (DNH); Hardware |
| 24 | 1.8 | **Red de comunicaciones** | 12.62d | 2020-11-13 | 2020-12-01 |  |  |
| 25 | 1.8.1 | Análisis | 2.62d | 2020-11-13 | 2020-11-17 | 15 | Analista de Redes; Diseñador de Redes |
| 26 | 1.8.2 | Diseño | 10d | 2020-11-17 | 2020-12-01 | 25 | Diseñador de Redes |

| ID | WBS | Task | Duration | Start | Finish | Predecessors | Resources |
| --- | --- | --- | --- | --- | --- | --- | --- |
| 27 | 1.9 | **Implantación del nuevo sistema informático** | 28.33d | 2021-07-02 | 2021-08-11 |  |  |
| 28 | 1.9.1 | Instalación del hardware | 3.33d | 2021-07-02 | 2021-07-07 | 20, 23 | Instalador de Hardware [200%]; Instalador de Redes |
| 29 | 1.9.2 | Instalación de la red | 5d | 2021-07-07 | 2021-07-14 | 26, 28 | Instalador de Redes [200%]; Redes |
| 30 | 1.9.3 | Instalación del software | 5d | 2021-07-07 | 2021-07-14 | 28 | Instalador de Software [150%] |
| 31 | 1.9.4 | Formación de usuarios | 15d | 2021-07-14 | 2021-08-04 | 30 | Instalador de Software [150%] |
| 32 | 1.9.5 | Migración de datos | 5d | 2021-08-04 | 2021-08-11 | 31 | Programador [200%] |
